# Cronograma de actividades del proyecto (Diagrama de Gantt)

Schedule from MS Project XML, 2026-02-09 to 2026-12-15.

## Calendars

- Estándar: Mon-Fri 08:00-12:00, 13:00-17:00; Sat-Sun off.

## Resources

| Resource |
| --- |
| Samuel Loyo |
| Anthony Escobar |
| Gabriel Aguilar |
| Rosmel Briceño |
| Equipo de Proyecto |

## Schedule

| ID | WBS | Task | Duration | Start | Finish | Predecessors | Constraint | Resources | Work |
| --- | --- | --- | --- | --- | --- | --- | --- | --- | --- |
| 1 | 1 | **I: Análisis** | 15d | 2026-02-09 | 2026-02-27 |  |  |  | 224h |
| 2 | 1.1 | **1.1 Análisis de requerimientos** | 15d | 2026-02-09 | 2026-02-27 |  |  |  | 224h |
| 3 | 1.1.1 | 1.1.1 Diagnóstico de la comunidad y levantamiento de información | 7d | 2026-02-09 | 2026-02-17 |  |  | Anthony Escobar; Gabriel Aguilar; Rosmel Briceño | 168h |
| 4 | 1.1.2 | 1.1.2 Definición de requerimientos | 7d | 2026-02-19 | 2026-02-27 | 3FS+1d |  | Samuel Loyo | 56h |
| 5 | 2 | **II: Factibilidad** | 5d | 2026-03-02 | 2026-03-06 |  |  |  | 80h |
| 6 | 2.1 | **2.1 Estudio de factibilidad** | 5d | 2026-03-02 | 2026-03-06 |  |  |  | 80h |
| 7 | 2.1.1 | 2.1.1 Factibilidad técnica, económica y operativa | 5d | 2026-03-02 | 2026-03-06 | 4 |  | Anthony Escobar; Gabriel Aguilar | 80h |
| 8 | 3 | **III: Diseño y modelado** | 30d | 2026-03-09 | 2026-04-17 |  |  |  | 240h |
| 9 | 3.1 | **3.1 Modelado del sistema** | 20d | 2026-03-09 | 2026-04-03 |  |  |  | 160h |
| 10 | 3.1.1 | 3.1.1 Casos de uso | 10d | 2026-03-09 | 2026-03-20 | 7 |  | Samuel Loyo | 80h |
| 11 | 3.1.2 | 3.1.2 Modelo de datos | 10d | 2026-03-23 | 2026-04-03 | 10 |  | Samuel Loyo | 80h |
| 12 | 3.2 | **3.2 Diseño de interfaz** | 10d | 2026-04-06 | 2026-04-17 |  |  |  | 80h |
| 13 | 3.2.1 | 3.2.1 Diseño lógico | 10d | 2026-04-06 | 2026-04-17 | 11 |  | Samuel Loyo | 80h |
| 14 | 4 | **IV: Desarrollo e implementación** | 98d | 2026-04-20 | 2026-09-02 |  |  |  | 1720h |
| 15 | 4.1 | **4.1 Configuración del entorno** | 15d | 2026-04-20 | 2026-05-08 |  |  |  | 120h |
| 16 | 4.1.1 | 4.1.1 Configuración del entorno de desarrollo | 5d | 2026-04-20 | 2026-04-24 | 13 |  | Samuel Loyo | 40h |
| 17 | 4.1.2 | 4.1.2 Módulo de inicio de sesión | 10d | 2026-04-27 | 2026-05-08 | 16 |  | Samuel Loyo | 80h |
| 18 | 4.2 | **4.2 Módulos del sistema** | 83d | 2026-05-11 | 2026-09-02 |  |  |  | 1600h |
| 19 | 4.2.1 | 4.2.1 Módulo de marcación | 20d | 2026-05-11 | 2026-06-05 | 17 |  | Samuel Loyo | 160h |
| 20 | 4.2.2 | 4.2.2 Módulo de empleados | 20d | 2026-06-08 | 2026-07-03 | 19 |  | Samuel Loyo | 160h |
| 21 | 4.2.3 | 4.2.3 Módulo de asistencia | 30d | 2026-06-22 | 2026-07-31 | 20SS+10d |  | Rosmel Briceño | 240h |
| 22 | 4.2.4 | 4.2.4 Módulo de pagos | 57d | 2026-05-11 | 2026-07-28 |  | start no earlier than 2026-05-11 | Gabriel Aguilar | 456h |
| 23 | 4.2.5 | 4.2.5 Módulo de conceptos | 25d | 2026-05-11 | 2026-06-12 |  | start no earlier than 2026-05-11 | Anthony Escobar | 200h |
| 24 | 4.2.6 | 4.2.6 Módulo de liquidaciones | 25d | 2026-06-15 | 2026-07-17 | 23 |  | Anthony Escobar | 200h |
| 25 | 4.2.7 | 4.2.7 Módulo de reportes | 23d | 2026-08-03 | 2026-09-02 | 21, 22, 24 |  | Gabriel Aguilar | 184h |

| ID | WBS | Task | Duration | Start | Finish | Predecessors | Resources | Work |
| --- | --- | --- | --- | --- | --- | --- | --- | --- |
| 26 | 5 | **V: Pruebas, instalación e implantación y evaluación** | 74d | 2026-09-03 | 2026-12-15 |  |  | 584h |
| 27 | 5.1 | **5.1 Pruebas** | 20d | 2026-09-03 | 2026-09-30 |  |  | 160h |
| 28 | 5.1.1 | 5.1.1 Pruebas unitarias | 20d | 2026-09-03 | 2026-09-30 | 25 | Samuel Loyo | 160h |
| 29 | 5.2 | **5.2 Instalación** | 20d | 2026-10-02 | 2026-10-29 |  |  | 160h |
| 30 | 5.2.1 | 5.2.1 Preparación y verificación | 3d | 2026-10-02 | 2026-10-06 | 28FS+1d | Samuel Loyo | 24h |
| 31 | 5.2.2 | 5.2.2 Instalación de software base | 5d | 2026-10-07 | 2026-10-13 | 30 | Samuel Loyo | 40h |
| 32 | 5.2.3 | 5.2.3 Despliegue del sistema | 4d | 2026-10-14 | 2026-10-19 | 31 | Samuel Loyo | 32h |
| 33 | 5.2.4 | 5.2.4 Pruebas de configuración de la instalación | 8d | 2026-10-20 | 2026-10-29 | 32 | Samuel Loyo | 64h |
| 34 | 5.3 | **5.3 Implantación, aceptación y capacitación** | 31d | 2026-10-30 | 2026-12-11 |  |  | 248h |
| 35 | 5.3.1 | 5.3.1 Preparación del proyecto | 1d | 2026-10-30 | 2026-10-30 | 33 | Samuel Loyo | 8h |
| 36 | 5.3.2 | 5.3.2 Acondicionamiento de instalaciones | 3d | 2026-11-02 | 2026-11-04 | 35 | Samuel Loyo | 24h |
| 37 | 5.3.3 | 5.3.3 Pruebas | 5d | 2026-11-05 | 2026-11-11 | 36 | Samuel Loyo | 40h |
| 38 | 5.3.4 | 5.3.4 Capacitación del personal | 5d | 2026-11-12 | 2026-11-18 | 37 | Samuel Loyo | 40h |
| 39 | 5.3.5 | **5.3.5 Puesta en marcha** | 17d | 2026-11-19 | 2026-12-11 |  |  | 136h |
| 40 | 5.3.5.1 | 5.3.5.1 Operación paralela del sistema con el sistema manual (15 días) | 15d | 2026-11-19 | 2026-12-09 | 38 | Samuel Loyo | 120h |
| 41 | 5.3.5.2 | 5.3.5.2 Análisis de resultados y corrección de errores | 1d | 2026-12-10 | 2026-12-10 | 40 | Samuel Loyo | 8h |
| 42 | 5.3.5.3 | 5.3.5.3 Arranque del sistema | 1d | 2026-12-11 | 2026-12-11 | 41 | Samuel Loyo | 8h |
| 43 | 5.4 | **5.4 Evaluación** | 2d | 2026-12-14 | 2026-12-15 |  |  | 16h |
| 44 | 5.4.1 | 5.4.1 Evaluación | 2d | 2026-12-14 | 2026-12-15 | 42 | Samuel Loyo | 16h |
